How a schedule from MS Project changed from version to version. A marks actual dates.

## Version 1 (saved 2018-12-16)

Note of the change: initial project and tasks

| ID | WBS | Task | Duration | Start | Finish | Predecessors | Total float |
| --- | --- | --- | --- | --- | --- | --- | --- |
| 1 | 1 | **Projekt aplikacji "Chat4B"** | 294.25d | 2018-12-17 | 2020-01-31 |  | 0d |
| 2 | 1.1 | **Etap I - Analiza** | 5.5d | 2018-12-17 | 2018-12-24 |  | 0d |
| 3 |  | Dokumentacja wymagań klienta | 4d | 2018-12-17 | 2018-12-20 |  | 0d |
| 4 |  | Wybór narzędzi programistycznych i technologii | 1d | 2018-12-21 | 2018-12-21 | 3 | 0d |
| 5 |  | Protokół etapu I | 4h | 2018-12-24 | 2018-12-24 | 4 | 0d |
| 6 | 1.2 | **Etap II - Projekt systemu I organizacja** | 23.5d | 2018-12-24 | 2019-01-24 | 2 | 0d |
| 7 |  | Konfiguracja systemu kontrolii wersji | 1d | 2018-12-24 | 2018-12-25 |  | 0d |
| 8 |  | Konfiguracja systemu Continous Integration | 1d | 2018-12-25 | 2018-12-26 | 7 | 0d |
| 9 |  | Instalacja I konfiguracja bazy danych | 2d | 2018-12-26 | 2018-12-28 | 8 | 0d |
| 10 |  | Stworzenie projektu Backend | 3d | 2018-12-28 | 2019-01-02 | 9 | 0d |
| 11 |  | Stworzenie projektu Frontend | 8d | 2019-01-02 | 2019-01-14 | 10 | 0d |
| 12 |  | Stworzenie projektu Android | 8d | 2019-01-14 | 2019-01-24 | 11 | 0d |
| 13 |  | Protokół etapu II | 4h | 2019-01-24 | 2019-01-24 | 12 | 0d |
| 14 | 1.3 | **Etap III - Prototyp** | 74.5d | 2019-01-25 | 2019-05-09 | 6 | 0d |
| 15 |  | Stworzenie struktury bazy danych | 2d | 2019-01-25 | 2019-01-28 |  | 0d |
| 16 |  | Implementacja systemu Backend | 21d | 2019-01-29 | 2019-02-26 | 15 | 0d |
| 17 |  | Implementacja systemu Frontend | 21d | 2019-02-27 | 2019-03-27 | 16 | 0d |
| 18 |  | Implementacja systemu Android | 21d | 2019-03-28 | 2019-04-25 | 17 | 0d |
| 19 |  | Retrospektywa | 1d | 2019-04-26 | 2019-04-26 | 18 | 0d |
| 20 |  | Testy I poprawa krytycznych funkcjonalności | 7d | 2019-04-29 | 2019-05-07 | 19 | 0d |
| 21 |  | Prezentacja postępu klientowi | 1d | 2019-05-08 | 2019-05-08 | 20 | 0d |
| 22 |  | Protokół etapu III | 4h | 2019-05-09 | 2019-05-09 | 21 | 0d |
| 23 | 1.4 | **Etap IV - Produkcja** | 150.5d | 2019-05-09 | 2019-12-05 | 14 | 0d |
| 24 |  | Napisanie testów dla Backend | 10d | 2019-05-09 | 2019-05-23 |  | 0d |
| 25 |  | Implemetnacja zabezpieczeń oraz dodatkowych funkcjonalności - Backend | 30d | 2019-05-23 | 2019-07-04 | 24 | 0d |
| 26 |  | Napisanie testów dla Frontend | 14d | 2019-07-04 | 2019-07-24 | 25 | 0d |
| 27 |  | Dodanie nowych funkcjonalnosci - Frontend | 40d | 2019-07-24 | 2019-09-18 | 26 | 0d |
| 28 |  | Napisanie testów dla Android | 14d | 2019-09-18 | 2019-10-08 | 27 | 0d |
| 29 |  | Dodanie nowych funkcjonalnosci - Android | 40d | 2019-10-08 | 2019-12-03 | 28 | 0d |
| 30 |  | Konsultacje z klientem | 2d | 2019-12-03 | 2019-12-05 | 29 | 0d |
| 31 |  | Protokół etapu IV | 4h | 2019-12-05 | 2019-12-05 | 30 | 0d |
| 32 | 1.5 | **Etap V - Wdrożenie** | 40.25d | 2019-12-06 | 2020-01-31 | 23 | 0d |
| 33 |  | Testy manualne | 7d | 2019-12-06 | 2019-12-16 |  | 0d |
| 34 |  | Optymalizacja oraz refactoring kodu | 14d | 2019-12-17 | 2020-01-03 | 33 | 0d |
| 35 |  | Poprawki kodu | 7d | 2020-01-06 | 2020-01-14 | 34 | 0d |
| 36 |  | Umieszczenie aplikacji w sieci | 2d | 2020-01-15 | 2020-01-16 | 35 | 0d |
| 37 |  | Umieszczenie aplikacji w Android Play | 6h | 2020-01-17 | 2020-01-17 | 36 | 0d |
| 38 |  | Sporządznie dokumentacji projektu | 7d | 2020-01-17 | 2020-01-28 | 37 | 0d |
| 39 |  | Oddanie produktu klientowi | 2d | 2020-01-28 | 2020-01-30 | 38 | 0d |
| 40 |  | Protokół etapu V | 4h | 2020-01-30 | 2020-01-31 | 39 | 0d |

## Version 2 (saved 2019-01-02)

Note of the change: add resources and fix

Last finish 2020-01-31 → 2019-07-19 (-196d).

Changed:

| ID | Task | Start | Finish | Duration | Total float | Predecessors | Other |
| --- | --- | --- | --- | --- | --- | --- | --- |
| 1 | **Projekt aplikacji "Chat4B"** | 2018-12-17 → 2019-02-01 (+46d) | 2020-01-31 → 2019-07-19 (-196d) | 294.25d → 120.5d |  |  |  |
| 2 | **Etap I - Analiza** | 2018-12-17 → 2019-02-01 (+46d) | 2018-12-24 → 2019-02-08 (+46d) |  |  |  | resources none → Licencje [0.1%]; Opłaty serwerowe [0.1%]; Opłaty za lokal oraz media [0.1%]; Zestaw Komputerowy |
| 3 | Dokumentacja wymagań klienta | 2018-12-17 → 2019-02-01 (+46d) | 2018-12-20 → 2019-02-06 (+48d) |  |  |  | resources none → Project Manager |
| 4 | Wybór narzędzi programistycznych i technologii | 2018-12-21 → 2019-02-07 (+48d) | 2018-12-21 → 2019-02-07 (+48d) |  |  |  | resources none → Project Manager |
| 5 | Protokół etapu I | 2018-12-24 → 2019-02-08 (+46d) | 2018-12-24 → 2019-02-08 (+46d) |  |  |  |  |
| 6 | **Etap II - Projekt systemu I organizacja** | 2018-12-24 → 2019-02-08 (+46d) | 2019-01-24 → 2019-02-25 (+32d) | 23.5d → 11.5d |  |  | resources none → Licencje [0.1%]; Opłaty serwerowe [0.1%]; Opłaty za lokal oraz media [0.1%]; Zestaw Komputerowy |
| 7 | Konfiguracja systemu kontrolii wersji | 2018-12-24 → 2019-02-08 (+46d) | 2018-12-25 → 2019-02-11 (+48d) |  |  | none → 2 | resources none → DevOps |
| 8 | Konfiguracja systemu Continous Integration | 2018-12-25 → 2019-02-11 (+48d) | 2018-12-26 → 2019-02-12 (+48d) |  | 0d → 9.5d |  | resources none → DevOps |
| 9 | Instalacja I konfiguracja bazy danych | 2018-12-26 → 2019-02-11 (+47d) | 2018-12-28 → 2019-02-13 (+47d) |  |  | 8 → 7 | resources none → Backend Developer; DevOps |
| 10 | Stworzenie projektu Backend | 2018-12-28 → 2019-02-13 (+47d) | 2019-01-02 → 2019-02-18 (+47d) |  | 0d → 5d |  | resources none → Backend Developer; Junior Backend Developer |
| 11 | Stworzenie projektu Frontend | 2019-01-02 → 2019-02-13 (+42d) | 2019-01-14 → 2019-02-25 (+42d) |  |  | 10 → 9 | resources none → Frontend Developer; Junior Frontend Developer; UI Designer |
| 12 | Stworzenie projektu Android | 2019-01-14 → 2019-02-13 (+30d) | 2019-01-24 → 2019-02-25 (+32d) |  |  | 11 → 9 | resources none → Android Developer; Junior Android Developer; UI Designer |
| 13 | Protokół etapu II | 2019-01-24 → 2019-02-25 (+32d) | 2019-01-24 → 2019-02-25 (+32d) |  |  | 12 → 12, 10, 11 |  |
| 14 | **Etap III - Prototyp** | 2019-01-25 → 2019-02-26 (+32d) | 2019-05-09 → 2019-04-09 (-30d) | 74.5d → 30.5d |  |  | resources none → Opłaty serwerowe [0.1%]; Opłaty za lokal oraz media [0.1%]; Zestaw Komputerowy; Licencje [0.1%] |
| 15 | Stworzenie struktury bazy danych | 2019-01-25 → 2019-02-26 (+32d) | 2019-01-28 → 2019-02-27 (+30d) |  | 0d → 19d |  | resources none → DevOps |
| 16 | Implementacja systemu Backend | 2019-01-29 → 2019-02-26 (+28d) | 2019-02-26 → 2019-03-26 (+28d) |  |  | 15 → none | resources none → Backend Developer; Junior Backend Developer |
| 17 | Implementacja systemu Frontend | 2019-02-27 → 2019-02-26 (-1d) | 2019-03-27 → 2019-03-26 (-1d) |  |  | 16 → none | resources none → Frontend Developer; Junior Frontend Developer |
| 18 | Implementacja systemu Android | 2019-03-28 → 2019-02-26 (-30d) | 2019-04-25 → 2019-03-26 (-30d) |  |  | 17 → none | resources none → Android Developer; Junior Android Developer |
| 19 | Retrospektywa | 2019-04-26 → 2019-03-27 (-30d) | 2019-04-26 → 2019-03-27 (-30d) |  |  | 18 → 18, 15, 16, 17 | resources none → Android Developer; Backend Developer; DevOps; Frontend Developer; Project Manager; UI Designer |
| 20 | Testy I poprawa krytycznych funkcjonalności | 2019-04-29 → 2019-03-28 (-32d) | 2019-05-07 → 2019-04-05 (-32d) |  |  |  | resources none → Android Developer; Backend Developer; DevOps; Frontend Developer; Junior Android Developer; Junior Backend Developer; Junior Frontend Developer; UI Designer |
| 21 | Prezentacja postępu klientowi | 2019-05-08 → 2019-04-08 (-30d) | 2019-05-08 → 2019-04-08 (-30d) |  |  |  | resources none → Project Manager; UI Designer |
| 22 | Protokół etapu III | 2019-05-09 → 2019-04-09 (-30d) | 2019-05-09 → 2019-04-09 (-30d) |  |  |  |  |
| 23 | **Etap IV - Produkcja** | 2019-05-09 → 2019-04-09 (-30d) | 2019-12-05 → 2019-06-06 (-182d) | 150.5d → 42.5d |  |  | resources none → Licencje [0.1%]; Opłaty serwerowe [0.1%]; Opłaty za lokal oraz media [0.1%]; Zestaw Komputerowy |
| 24 | Napisanie testów dla Backend | 2019-05-09 → 2019-04-09 (-30d) | 2019-05-23 → 2019-04-23 (-30d) |  | 0d → 32.5d |  | resources none → Backend Developer; Junior Backend Developer |
| 25 | Implemetnacja zabezpieczeń oraz dodatkowych funkcjonalności - Backend | 2019-05-23 → 2019-04-09 (-44d) | 2019-07-04 → 2019-05-21 (-44d) |  | 0d → 10d | 24 → none | resources none → Backend Developer; Junior Backend Developer |
| 26 | Napisanie testów dla Frontend | 2019-07-04 → 2019-04-09 (-86d) | 2019-07-24 → 2019-04-29 (-86d) |  | 0d → 28.5d | 25 → none | resources none → Frontend Developer; Junior Frontend Developer |
| 27 | Dodanie nowych funkcjonalnosci - Frontend | 2019-07-24 → 2019-04-09 (-106d) | 2019-09-18 → 2019-06-04 (-106d) |  |  | 26 → none | resources none → Frontend Developer; Junior Frontend Developer |
| 28 | Napisanie testów dla Android | 2019-09-18 → 2019-04-09 (-162d) | 2019-10-08 → 2019-04-29 (-162d) |  | 0d → 28.5d | 27 → none | resources none → Android Developer; Junior Android Developer |
| 29 | Dodanie nowych funkcjonalnosci - Android | 2019-10-08 → 2019-04-09 (-182d) | 2019-12-03 → 2019-06-04 (-182d) |  |  | 28 → none | resources none → Android Developer; Junior Android Developer |
| 30 | Konsultacje z klientem | 2019-12-03 → 2019-06-04 (-182d) | 2019-12-05 → 2019-06-06 (-182d) |  |  | 29 → 29, 25, 27 | resources none → Android Developer; Backend Developer; Frontend Developer; Project Manager; UI Designer |
| 31 | Protokół etapu IV | 2019-12-05 → 2019-06-06 (-182d) | 2019-12-05 → 2019-06-06 (-182d) |  |  |  |  |
| 32 | **Etap V - Wdrożenie** | 2019-12-06 → 2019-06-07 (-182d) | 2020-01-31 → 2019-07-19 (-196d) | 40.25d → 30.5d |  |  | resources none → Opłaty serwerowe [0.1%]; Opłaty za lokal oraz media [0.1%]; Zestaw Komputerowy; Licencje [0.1%] |
| 33 | Testy manualne | 2019-12-06 → 2019-06-07 (-182d) | 2019-12-16 → 2019-06-17 (-182d) |  | 0d → 7d |  | resources none → Tester Manualny; Tester Manualny 2 |
| 34 | Optymalizacja oraz refactoring kodu | 2019-12-17 → 2019-06-07 (-193d) | 2020-01-03 → 2019-06-26 (-191d) |  |  | 33 → none | resources none → Android Developer; Backend Developer; DevOps; Frontend Developer; Junior Android Developer; Junior Backend Developer; Junior Frontend Developer; UI Designer |
| 35 | Poprawki kodu | 2020-01-06 → 2019-06-27 (-193d) | 2020-01-14 → 2019-07-05 (-193d) |  |  | 34 → 34, 33 | resources none → Android Developer; Backend Developer; DevOps; Frontend Developer; Junior Android Developer; Junior Backend Developer; Junior Frontend Developer |
| 36 | Umieszczenie aplikacji w sieci | 2020-01-15 → 2019-07-08 (-191d) | 2020-01-16 → 2019-07-09 (-191d) |  | 0d → 5d |  | resources none → DevOps; Frontend Developer; Backend Developer |
| 37 | Umieszczenie aplikacji w Android Play | 2020-01-17 → 2019-07-08 (-193d) | 2020-01-17 → 2019-07-08 (-193d) |  | 0d → 6.25d | 36 → 35 | resources none → Android Developer; DevOps |
| 38 | Sporządznie dokumentacji projektu | 2020-01-17 → 2019-07-08 (-193d) | 2020-01-28 → 2019-07-16 (-196d) |  |  | 37 → 35 | resources none → Android Developer; Backend Developer; DevOps; Frontend Developer; Junior Android Developer; Junior Backend Developer; Junior Frontend Developer; Tester Manualny; UI Designer |
| 39 | Oddanie produktu klientowi | 2020-01-28 → 2019-07-17 (-195d) | 2020-01-30 → 2019-07-18 (-196d) |  |  | 38 → 38, 36, 37 | resources none → Android Developer; Backend Developer; DevOps; Frontend Developer; Project Manager; UI Designer |
| 40 | Protokół etapu V | 2020-01-30 → 2019-07-19 (-195d) | 2020-01-31 → 2019-07-19 (-196d) |  |  |  |  |

## Version 3 (saved 2019-01-02)

Note of the change: add network diagram

Last finish stays 2019-07-19.

Changed:

| ID | Task | Other |
| --- | --- | --- |
| 5 | Protokół etapu I | resources none → Project Manager |
| 13 | Protokół etapu II | resources none → Project Manager |
| 22 | Protokół etapu III | resources none → Project Manager |
| 31 | Protokół etapu IV | resources none → Project Manager |
| 40 | Protokół etapu V | resources none → Project Manager |
